# GestioneTurniPersonale

Schedule from MS Project, 2022-01-27 to 2022-05-05.

## Calendars

- Standard: Mon-Fri 09:00-13:00, 14:00-18:00; Sat-Sun off. Exceptions (off unless hours are given): 2022-01-27 to 2022-05-05 09:05-12:20, 13:15-16:30 (Lavorativo, recurring), 2022-01-27 to 2022-05-05 (Non lavorativo, recurring), 2022-03-03 (Vacanza carnevale), 2022-04-21 (Vacanza pasqua).
- 30%: Mon-Fri 09:00-13:00, 14:00-18:00; Sat-Sun off. Exceptions (off unless hours are given): 2022-01-27 to 2022-05-05 09:05-11:29 (Lavorativo, recurring), 2022-01-27 to 2022-05-05 (Non lavorativo, recurring), 2022-03-03 (Vacanza carnevale), 2022-04-21 (Vacanza pasqua).

## Resources

| Resource |
| --- |
| Gioele |
| Andrea |
| Dennis |

## Schedule

| ID | WBS | Task | Type | Duration | Start | Finish | Predecessors | Baseline start | Baseline finish | Baseline duration | Total slack | Free slack | Constraint | Resources | Work |
| --- | --- | --- | --- | --- | --- | --- | --- | --- | --- | --- | --- | --- | --- | --- | --- |
| 1 | 1 | **Gestione Turni Personale** |  | 10.75d | 2022-01-27 09:05 | 2022-05-05 18:00 |  | 2022-01-27 09:05 | 2022-05-05 18:00 | 10.75d |  |  |  |  | 193h |
| 2 | 1.1 | **Analisi** |  | 0.69d | 2022-01-27 09:05 | 2022-01-27 15:30 |  | 2022-01-27 09:05 | 2022-01-27 15:30 | 0.69d | 1.56d | 0d |  |  | 16.5h |
| 3 | 1.1.1 | Domande al mandante |  | 0.5h | 2022-01-27 09:05 | 2022-01-27 09:35 |  | 2022-01-27 09:05 | 2022-01-27 09:35 | 0.5h | 1.56d | 0d |  | Andrea; Dennis; Gioele | 1.5h |
| 4 | 1.1.2 | Pianificazione Gantt |  | 3h | 2022-01-27 09:35 | 2022-01-27 13:30 | 3 | 2022-01-27 09:35 | 2022-01-27 13:30 | 3h | 1.56d | 0d |  | Dennis; Andrea; Gioele | 9h |
| 5 | 1.1.3 | Requisiti |  | 1h | 2022-01-27 13:30 | 2022-01-27 14:30 | 4 | 2022-01-27 13:30 | 2022-01-27 14:30 | 1h | 1.56d | 0d |  | Andrea; Dennis; Gioele | 3h |
| 6 | 1.1.4 | Test case |  | 1h | 2022-01-27 14:30 | 2022-01-27 15:30 | 5 | 2022-01-27 14:30 | 2022-01-27 15:30 | 1h | 1.56d |  |  | Gioele | 1h |
| 7 | 1.1.5 | Use case |  | 1h | 2022-01-27 14:30 | 2022-01-27 15:30 | 5 | 2022-01-27 14:30 | 2022-01-27 15:30 | 1h | 1.56d |  |  | Andrea | 1h |
| 8 | 1.1.6 | Abstract |  | 1h | 2022-01-27 14:30 | 2022-01-27 15:30 | 5 | 2022-01-27 14:30 | 2022-01-27 15:30 | 1h | 1.56d |  |  | Dennis | 1h |
| 9 | 1.2 | Termine analisi | milestone | 0d | 2022-01-27 15:30 | 2022-01-27 15:30 | 2 | 2022-01-27 15:30 | 2022-01-27 15:30 | 0d | 1.56d | 0d |  |  |  |
| 10 | 1.3 | **Progettazione** |  | 1d | 2022-01-27 15:30 | 2022-02-10 09:35 |  | 2022-01-27 15:30 | 2022-02-10 09:35 | 1d | 1.56d | 0d |  |  | 24h |
| 11 | 1.3.1 | Design del database |  | 4h | 2022-01-27 15:30 | 2022-02-03 12:05 | 9 | 2022-01-27 15:30 | 2022-02-03 12:05 | 4h | 1.56d | 0d |  | Dennis; Andrea; Gioele | 12h |
| 12 | 1.3.2 | Design delle pagine web |  | 4h | 2022-02-03 12:05 | 2022-02-10 09:35 | 11 | 2022-02-03 12:05 | 2022-02-10 09:35 | 4h | 1.56d |  |  | Andrea; Gioele; Dennis | 12h |
| 13 | 1.4 | Termine progettazione | milestone | 0d | 2022-02-10 09:35 | 2022-02-10 09:35 | 10 | 2022-02-10 09:35 | 2022-02-10 09:35 | 0d | 1.56d | 0d |  |  |  |
| 14 | 1.5 | **Implementazione** |  | 6.81d | 2022-02-10 09:35 | 2022-04-14 12:05 |  | 2022-02-10 09:35 | 2022-04-28 15:30 | 7.94d | 1.56d | 0d |  |  | 143.5h |
| 15 | 1.5.1 | Configurazione ambiente |  | 2h | 2022-02-10 09:35 | 2022-02-10 11:35 | 13 | 2022-02-10 09:35 | 2022-02-10 11:35 | 2h | 1.56d | 0d |  | Andrea; Dennis; Gioele | 6h |
| 16 | 1.5.2 | Creazione database |  | 0.5h | 2022-02-10 11:35 | 2022-02-10 12:05 | 15 | 2022-02-10 11:35 | 2022-02-10 12:05 | 0.5h | 1.56d | 0d |  | Andrea; Dennis; Gioele | 1.5h |
| 17 | 1.5.3 | **Applicativo web** |  | 6.5d | 2022-02-10 12:05 | 2022-04-14 12:05 |  | 2022-02-10 12:05 | 2022-04-28 15:30 | 7.62d | 1.56d |  |  |  | 136h |
| 18 | 1.5.3.1 | Pagina login |  | 2h | 2022-02-10 12:05 | 2022-02-10 15:00 | 16 | 2022-02-10 12:05 | 2022-02-10 15:00 | 2h | 7.81d |  |  | Andrea; Gioele | 4h |
| 19 | 1.5.3.2 | Pagine gestione datori |  | 4h | 2022-02-10 12:05 | 2022-02-17 09:35 | 16 | 2022-02-10 12:05 | 2022-02-17 14:30 | 8h | 1.56d | 0d | finish no earlier than 2022-02-10 18:00 | Dennis | 4h |
| 20 | 1.5.3.3 | Pagine gestione negozi |  | 4h | 2022-02-17 09:35 | 2022-02-17 14:30 | 19 | 2022-02-17 14:30 | 2022-02-24 16:00 | 8h | 1.56d | 0d |  | Dennis; Andrea; Gioele | 12h |
| 21 | 1.5.3.4 | Pagine gestione dipendenti |  | 4h | 2022-02-17 14:30 | 2022-02-24 11:05 | 20 | 2022-02-24 16:00 | 2022-03-17 10:05 | 8h | 1.56d | 0d |  | Andrea; Gioele | 8h |
| 22 | 1.5.3.5 | Pagina gestione orario negozio |  | 20h | 2022-02-24 11:05 | 2022-03-24 11:35 | 21 | 2022-03-17 10:05 | 2022-03-31 12:05 | 15h | 1.56d | 0d |  | Dennis; Andrea; Gioele | 60h |
| 23 | 1.5.3.6 | Panoramica dipendenti |  | 8h | 2022-03-24 11:35 | 2022-03-31 14:00 | 22 | 2022-03-31 12:05 | 2022-04-14 11:05 | 12h | 2.31d | 0.75d |  | Dennis; Andrea | 16h |
| 24 | 1.5.3.7 | Home |  | 8h | 2022-03-24 11:35 | 2022-03-31 14:00 | 22 | 2022-03-31 12:05 | 2022-04-07 14:30 | 8h | 1.56d | 0d |  | Gioele | 8h |
| 25 | 1.5.3.8 | Invio email |  | 6h | 2022-03-31 14:00 | 2022-04-07 13:30 | 24 | 2022-04-07 14:30 | 2022-04-14 14:00 | 6h | 1.56d | 0d |  | Gioele | 6h |
| 26 | 1.5.3.9 | Pagina statistiche |  | 6h | 2022-04-07 13:30 | 2022-04-14 12:05 | 25, 23 | 2022-04-14 14:00 | 2022-04-28 15:30 | 8h | 1.56d |  |  | Andrea; Dennis; Gioele | 18h |

| ID | WBS | Task | Type | Duration | Start | Finish | Predecessors | Baseline start | Baseline finish | Baseline duration | Total slack | Free slack | Constraint | Calendar | Resources | Work |
| --- | --- | --- | --- | --- | --- | --- | --- | --- | --- | --- | --- | --- | --- | --- | --- | --- |
| 27 | 1.6 | **Test** |  | 0.5d | 2022-04-14 12:05 | 2022-04-28 09:35 |  | 2022-04-28 15:30 | 2022-05-05 12:05 | 0.5d | 1.56d |  |  |  |  | 9h |
| 28 | 1.6.1 | Controllo gestione negozi |  | 2h | 2022-04-14 12:05 | 2022-04-14 15:00 | 14 | 2022-04-28 15:30 | 2022-05-05 10:05 | 2h | 1.56d | 0d |  |  | Andrea | 2h |
| 29 | 1.6.2 | Controllo utenti |  | 1h | 2022-04-14 12:05 | 2022-04-14 14:00 | 14 | 2022-04-28 15:30 | 2022-04-28 16:30 | 1h | 1.69d | 0.12d |  |  | Dennis | 1h |
| 30 | 1.6.3 | Controllo gestione dipendenti |  | 2h | 2022-04-14 12:05 | 2022-04-14 15:00 | 14 | 2022-04-28 15:30 | 2022-05-05 10:05 | 2h | 1.56d | 0d |  |  | Gioele | 2h |
| 31 | 1.6.4 | Controllo gestione orari |  | 1h | 2022-04-14 15:00 | 2022-04-14 16:00 | 28, 29, 30 | 2022-05-05 10:05 | 2022-05-05 11:05 | 1h | 1.69d |  |  |  | Andrea | 1h |
| 32 | 1.6.5 | Controllo statistiche |  | 2h | 2022-04-14 15:00 | 2022-04-28 09:35 | 28, 29, 30 | 2022-05-05 10:05 | 2022-05-05 12:05 | 2h | 1.56d |  |  |  | Dennis | 2h |
| 33 | 1.6.6 | Controllo invio email |  | 1h | 2022-04-14 15:00 | 2022-04-14 16:00 | 28, 29, 30 | 2022-05-05 10:05 | 2022-05-05 11:05 | 1h | 1.69d |  |  |  | Gioele | 1h |
| 34 | 1.7 | Documentazione |  | 23.4h | 2022-02-10 09:41 | 2022-05-05 09:00 | 35FF | 2022-02-10 09:41 | 2022-05-05 09:00 | 23.4h | 0.3d |  |  | 30% |  |  |
| 35 | 1.8 | Consegna del progetto | milestone | 0d | 2022-05-05 09:00 | 2022-05-05 09:00 |  | 2022-05-05 09:00 | 2022-05-05 09:00 | 0d | 0.3d | 0d | start no earlier than 2022-05-05 09:00 |  |  |  |
